# 29561_10193_3312021105942AM813182-v2013

Schedule from MS Project, 2021-03-31 to 2022-02-07, costs in $.
Sabian Technologies

## Calendars

- Standard: Mon-Fri 08:00-12:00, 13:00-17:00; Sat-Sun off.

## Resources

| Resource | Rate |
| --- | --- |
| Project Manager | 129 |
| Marketing Manager | 93 |
| Junior Marketing Specialist | 52 |
| Senior Product Designer | 74 |
| Junior Product Designer | 49 |
| Engineer | 48 |
| Quality Engineer | 75 |
| Operations Specialist | 50 |

## Schedule

| ID | WBS | Task | Duration | Start | Finish | Predecessors | Baseline start | Baseline finish | Baseline duration | Total slack | Free slack | Resources | Work | Cost | Baseline cost |
| --- | --- | --- | --- | --- | --- | --- | --- | --- | --- | --- | --- | --- | --- | --- | --- |
| 1 | 1 | **Market Assessment** | 25.5d? | 2021-03-31 | 2021-05-05 |  | 2021-03-31 | 2021-05-05 | 25.5d? | 12d |  |  | 408h | 29,580 | 29,580 |
| 2 | 1.1 | Evaluate market | 6d? | 2021-03-31 | 2021-04-08 |  | 2021-03-31 | 2021-04-08 | 6d? | 12d | 0d | Junior Marketing Specialist; Marketing Manager | 96h | 6,960 | 6,960 |
| 3 | 1.2 | Develop Business opportunity | 7d? | 2021-04-08 | 2021-04-19 | 2 | 2021-04-08 | 2021-04-19 | 7d? | 12d | 0d | Junior Marketing Specialist; Marketing Manager | 112h | 8,120 | 8,120 |
| 4 | 1.3 | Customer preference study | 10.5d? | 2021-04-19 | 2021-05-03 | 3 | 2021-04-19 | 2021-05-03 | 10.5d? | 12d | 0d | Junior Marketing Specialist; Marketing Manager | 168h | 12,180 | 12,180 |
| 5 | 1.4 | Business evaluation (NPV, etc.) | 2d? | 2021-05-03 | 2021-05-05 | 4 | 2021-05-03 | 2021-05-05 | 2d? | 12d | 0d | Junior Marketing Specialist; Marketing Manager | 32h | 2,320 | 2,320 |
| 6 | 2 | **Procurement** | 92d? | 2021-08-20 | 2021-12-28 |  | 2021-08-20 | 2021-12-28 | 92d? | 3.5d |  |  | 224h | 14,408 | 14,408 |
| 7 | 2.1 | Identify vendors | 7d? | 2021-08-20 | 2021-08-31 | 26, 73 | 2021-08-20 | 2021-08-31 | 7d? | 23d | 11d | Junior Marketing Specialist | 56h | 2,912 | 2,912 |
| 8 | 2.2 | Develop and Issue RFQ | 6d? | 2021-08-20 | 2021-09-08 | 73, 26 | 2021-08-20 | 2021-09-08 | 6d? | 17.38d | 5.38d | Junior Marketing Specialist | 48h | 2,496 | 2,496 |
| 9 | 2.3 | Issue sample (production equivalent) | 5d? | 2021-09-15 | 2021-09-22 | 26, 7, 8, 74 | 2021-09-15 | 2021-09-22 | 5d? | 12d | 0d | Quality Engineer | 40h | 3,000 | 3,000 |
| 10 | 2.4 | Assess RFQ responses and select vendors | 10d? | 2021-12-14 | 2021-12-28 | 78, 14 | 2021-12-14 | 2021-12-28 | 10d? | 3.5d |  | Quality Engineer | 80h | 6,000 | 6,000 |
| 11 | 3 | **Supplier Quality** | 47d? | 2021-09-22 | 2021-11-26 |  | 2021-09-22 | 2021-11-26 | 47d? | 12d |  |  | 256h | 19,200 | 19,200 |
| 12 | 3.1 | Perform supplier process capability | 14d? | 2021-09-22 | 2021-10-12 | 9 | 2021-09-22 | 2021-10-12 | 14d? | 12d | 0d | Quality Engineer | 112h | 8,400 | 8,400 |
| 13 | 3.2 | Approve sample parts | 8d? | 2021-10-12 | 2021-10-22 | 12, 75 | 2021-10-12 | 2021-10-22 | 8d? | 19d | 7d | Quality Engineer | 64h | 4,800 | 4,800 |
| 14 | 3.3 | Qualify Supplier | 10d? | 2021-11-12 | 2021-11-26 | 77, 13 | 2021-11-12 | 2021-11-26 | 10d? | 12d |  | Quality Engineer | 80h | 6,000 | 6,000 |
| 15 | 4 | **Design** | 51d? | 2021-05-05 | 2021-07-15 |  | 2021-05-05 | 2021-07-15 | 51d? | 12d |  |  | 456h | 25,144 | 25,144 |
| 16 | 4.1 | Design and development plan | 3d? | 2021-05-05 | 2021-05-10 | 5, 69 | 2021-05-05 | 2021-05-10 | 3d? | 12d | 0d | Junior Product Designer; Senior Product Designer | 48h | 2,952 | 2,952 |
| 17 | 4.2 | Design specs. | 11d? | 2021-05-10 | 2021-05-25 | 16 | 2021-05-10 | 2021-05-25 | 11d? | 12d | 0d | Junior Product Designer; Senior Product Designer | 176h | 10,824 | 10,824 |
| 18 | 4.3 | Identify testing requirements | 10d? | 2021-05-25 | 2021-06-08 | 17, 70, 50 | 2021-05-25 | 2021-06-08 | 10d? | 20d | 0d | Junior Product Designer | 80h | 3,920 | 3,920 |
| 19 | 4.4 | Risk analysis | 10d? | 2021-06-08 | 2021-06-22 | 18 | 2021-06-08 | 2021-06-22 | 10d? | 20d | 8d | Junior Product Designer | 80h | 3,920 | 3,920 |
| 20 | 4.5 | Design labeling | 5d? | 2021-07-02 | 2021-07-09 | 19, 71 | 2021-07-02 | 2021-07-09 | 5d? | 12d | 0d | Junior Product Designer | 40h | 1,960 | 1,960 |
| 21 | 4.6 | Approve design | 4d? | 2021-07-09 | 2021-07-15 | 20 | 2021-07-09 | 2021-07-15 | 4d? | 12d | 0d | Junior Product Designer | 32h | 1,568 | 1,568 |
| 22 | 5 | **Engineering** | 93d? | 2021-07-15 | 2021-11-23 |  | 2021-07-15 | 2021-11-23 | 93d? | 12d |  |  | 512h | 24,576 | 24,576 |
| 23 | 5.1 | Initial engineering specs. | 5d? | 2021-07-15 | 2021-07-22 | 21 | 2021-07-15 | 2021-07-22 | 5d? | 12d | 0d | Engineer | 40h | 1,920 | 1,920 |
| 24 | 5.2 | Design verification activities | 7d? | 2021-07-22 | 2021-08-02 | 23, 72 | 2021-07-22 | 2021-08-02 | 7d? | 12d | 0d | Engineer | 56h | 2,688 | 2,688 |
| 25 | 5.3 | Verification design review | 4d? | 2021-08-02 | 2021-08-06 | 24 | 2021-08-02 | 2021-08-06 | 4d? | 12d | 0d | Engineer | 32h | 1,536 | 1,536 |
| 26 | 5.4 | Release pre-production specifications | 10d? | 2021-08-06 | 2021-08-20 | 25 | 2021-08-06 | 2021-08-20 | 10d? | 12d | 0d | Engineer | 80h | 3,840 | 3,840 |
| 27 | 5.5 | Build functional model | 18d? | 2021-08-20 | 2021-09-15 | 26, 73 | 2021-08-20 | 2021-09-15 | 18d? | 12d | 0d | Engineer | 144h | 6,912 | 6,912 |
| 28 | 5.6 | Design validation activities | 5d? | 2021-10-12 | 2021-10-19 | 75, 27, 12 | 2021-10-12 | 2021-10-19 | 5d? | 22d | 10d | Engineer | 40h | 1,920 | 1,920 |
| 29 | 5.7 | Validation design review | 4d? | 2021-11-02 | 2021-11-08 | 28, 76 | 2021-11-02 | 2021-11-08 | 4d? | 12d | 0d | Engineer | 32h | 1,536 | 1,536 |
| 30 | 5.8 | Approve model design | 4d? | 2021-11-08 | 2021-11-12 | 29 | 2021-11-08 | 2021-11-12 | 4d? | 12d | 0d | Engineer | 32h | 1,536 | 1,536 |
| 31 | 5.9 | Design transfer activities | 7d? | 2021-11-12 | 2021-11-23 | 30, 36, 77 | 2021-11-12 | 2021-11-23 | 7d? | 12d |  | Engineer | 56h | 2,688 | 2,688 |

| ID | WBS | Task | Duration | Start | Finish | Predecessors | Baseline start | Baseline finish | Baseline duration | Total slack | Free slack | Constraint | Resources | Work | Cost | Baseline cost |
| --- | --- | --- | --- | --- | --- | --- | --- | --- | --- | --- | --- | --- | --- | --- | --- | --- |
| 32 | 6 | **Engineering Quality** | 82d? | 2021-08-20 | 2021-12-14 |  | 2021-08-20 | 2021-12-14 | 82d? | 0d |  |  |  | 296h | 21,768 | 21,768 |
| 33 | 6.1 | Evaluate design specifications | 10d? | 2021-08-20 | 2021-09-03 | 73, 26 | 2021-08-20 | 2021-09-03 | 10d? | 20d | 8d |  | Quality Engineer | 80h | 6,000 | 6,000 |
| 34 | 6.2 | Develop testing protocol for prototype | 8d? | 2021-09-15 | 2021-09-27 | 26, 33, 74 | 2021-09-15 | 2021-09-27 | 8d? | 23d | 11d |  | Engineer | 64h | 3,072 | 3,072 |
| 35 | 6.3 | Test prototype | 10d? | 2021-10-12 | 2021-10-26 | 75, 34, 27, 12 | 2021-10-12 | 2021-10-26 | 10d? | 17d | 5d |  | Quality Engineer | 80h | 6,000 | 6,000 |
| 36 | 6.4 | Evaluate results of tests and identify weaknesses | 6d? | 2021-11-02 | 2021-11-10 | 76, 35 | 2021-11-02 | 2021-11-10 | 6d? | 14d | 2d |  | Quality Engineer | 48h | 3,600 | 3,600 |
| 37 | 6.5 | Product release meetings | 3d? | 2021-12-09 | 2021-12-14 | 31, 36, 30 | 2021-12-09 | 2021-12-14 | 3d? | 0d |  | start no earlier than 2021-12-09 | Project Manager | 24h | 3,096 | 3,096 |
| 38 | 7 | **Manufacturing** | 80.5d? | 2021-10-12 | 2022-02-02 |  | 2021-10-12 | 2022-02-02 | 80.5d? | 0d |  |  |  | 452h | 22,600 | 22,600 |
| 39 | 7.1 | Process engineering plan | 15d? | 2021-10-12 | 2021-11-02 | 27, 12, 75 | 2021-10-12 | 2021-11-02 | 15d? | 12d | 0d |  | Operations Specialist | 120h | 6,000 | 6,000 |
| 40 | 7.2 | Develop production plan | 6d? | 2021-11-12 | 2021-11-22 | 77, 36, 29, 39 | 2021-11-12 | 2021-11-22 | 6d? | 16d |  |  | Operations Specialist | 48h | 2,400 | 2,400 |
| 41 | 7.3 | Develop production control plan | 8.5d? | 2021-12-14 | 2021-12-27 | 40, 14, 78 | 2021-12-14 | 2021-12-27 | 8.5d? | 0d |  |  | Operations Specialist | 68h | 3,400 | 3,400 |
| 42 | 7.4 | Approve production parts | 5d? | 2021-12-27 | 2022-01-03 | 41 | 2021-12-27 | 2022-01-03 | 5d? | 0d |  |  | Operations Specialist | 40h | 2,000 | 2,000 |
| 43 | 7.5 | Contracting for deliveries | 8d? | 2022-01-03 | 2022-01-13 | 42, 10 | 2022-01-03 | 2022-01-13 | 8d? | 0d |  |  | Operations Specialist | 64h | 3,200 | 3,200 |
| 44 | 7.6 | Submit production purchase order | 2d? | 2022-01-13 | 2022-01-17 | 43, 79 | 2022-01-13 | 2022-01-17 | 2d? | 0d |  |  | Operations Specialist | 16h | 800 | 800 |
| 45 | 7.7 | Production pilot test | 5d? | 2022-01-17 | 2022-01-24 | 44, 37 | 2022-01-17 | 2022-01-24 | 5d? | 0d |  |  | Operations Specialist | 40h | 2,000 | 2,000 |
| 46 | 7.8 | Debugging production system | 4d? | 2022-01-24 | 2022-01-28 | 45 | 2022-01-24 | 2022-01-28 | 4d? | 0d |  |  | Operations Specialist | 32h | 1,600 | 1,600 |
| 47 | 7.9 | Production release | 3d? | 2022-01-28 | 2022-02-02 | 46 | 2022-01-28 | 2022-02-02 | 3d? | 0d |  |  | Operations Specialist | 24h | 1,200 | 1,200 |
| 48 | 8 | **Commercialization** | 197.5d? | 2021-05-05 | 2022-02-07 |  | 2021-05-05 | 2022-02-07 | 197.5d? | 0d |  |  |  | 608h | 44,080 | 44,080 |
| 49 | 8.1 | Develop preliminary marketing plan | 2.5d? | 2021-05-05 | 2021-05-10 | 5, 69 | 2021-05-05 | 2021-05-10 | 2.5d? | 16d | 0d |  | Junior Marketing Specialist; Marketing Manager | 40h | 2,900 | 2,900 |
| 50 | 8.2 | Develop marketing program | 7.5d? | 2021-05-10 | 2021-05-19 | 49 | 2021-05-10 | 2021-05-19 | 7.5d? | 16d | 4d |  | Junior Marketing Specialist; Marketing Manager | 120h | 8,700 | 8,700 |
| 51 | 8.3 | Train sales team | 22d? | 2021-05-25 | 2021-06-24 | 50, 70 | 2021-05-25 | 2021-06-24 | 22d? | 18d | 6d |  | Junior Marketing Specialist | 176h | 9,152 | 9,152 |
| 52 | 8.4 | Advertising campaign | 28d? | 2021-05-25 | 2021-07-02 | 70, 50 | 2021-05-25 | 2021-07-02 | 28d? | 12d | 0d |  | Marketing Manager | 224h | 20,832 | 20,832 |
| 53 | 8.5 | Show functional model at trade show | 3d? | 2021-10-12 | 2021-10-15 | 50, 75, 12, 27 | 2021-10-12 | 2021-10-15 | 3d? | 24d | 12d |  | Junior Marketing Specialist | 24h | 1,248 | 1,248 |
| 54 | 8.6 | Product launch | 3d? | 2022-02-02 | 2022-02-07 | 47, 51, 52, 53 | 2022-02-02 | 2022-02-07 | 3d? | 0d |  |  | Junior Marketing Specialist | 24h | 1,248 | 1,248 |
| 55 | 9 | **Project Management** | 216d? | 2021-03-31 | 2022-01-27 |  | 2021-03-31 | 2022-01-27 | 216d? | 7d |  |  |  | 1088h | 140,352 | 140,352 |
| 56 | 9.1 | Project Management Period 1 | 25d? | 2021-03-31 | 2021-05-05 |  | 2021-03-31 | 2021-05-05 | 25d? | 12.5d | 0.5d |  | Project Manager | 200h | 25,800 | 25,800 |
| 57 | 9.2 | Project Management Period 2 | 14d? | 2021-05-05 | 2021-05-25 | 56, 69 | 2021-05-05 | 2021-05-25 | 14d? | 12d | 0d |  | Project Manager | 112h | 14,448 | 14,448 |
| 58 | 9.3 | Project Management Period 3 | 14d? | 2021-05-25 | 2021-06-14 | 70, 57 | 2021-05-25 | 2021-06-14 | 14d? | 26d | 14d |  | Project Manager | 112h | 14,448 | 14,448 |
| 59 | 9.4 | Project Management Period 4 | 13d? | 2021-07-02 | 2021-07-21 | 58, 71 | 2021-07-02 | 2021-07-21 | 13d? | 13d | 1d |  | Project Manager | 104h | 13,416 | 13,416 |
| 60 | 9.5 | Project Management Period 5 | 15d? | 2021-07-22 | 2021-08-12 | 72, 59 | 2021-07-22 | 2021-08-12 | 15d? | 18d | 6d |  | Project Manager | 120h | 15,480 | 15,480 |
| 61 | 9.6 | Project Management Period 6 | 9d? | 2021-08-20 | 2021-09-02 | 60, 73 | 2021-08-20 | 2021-09-02 | 9d? | 21d | 9d |  | Project Manager | 72h | 9,288 | 9,288 |
| 62 | 9.7 | Project Management Period 7 | 11d? | 2021-09-15 | 2021-09-30 | 74, 61 | 2021-09-15 | 2021-09-30 | 11d? | 20d | 8d |  | Project Manager | 88h | 11,352 | 11,352 |
| 63 | 9.8 | Project Management Period 8 | 3d? | 2021-10-12 | 2021-10-15 | 62, 75 | 2021-10-12 | 2021-10-15 | 3d? | 24d | 12d |  | Project Manager | 24h | 3,096 | 3,096 |
| 64 | 9.9 | Project Management Period 9 | 4d? | 2021-11-02 | 2021-11-08 | 76, 63 | 2021-11-02 | 2021-11-08 | 4d? | 16d | 4d |  | Project Manager | 32h | 4,128 | 4,128 |
| 65 | 9.10 | Project Management Period 10 | 5d? | 2021-11-12 | 2021-11-19 | 64, 77 | 2021-11-12 | 2021-11-19 | 5d? | 17d |  |  | Project Manager | 40h | 5,160 | 5,160 |
| 66 | 9.11 | Project Management Period 11 | 13d? | 2021-12-14 | 2021-12-31 | 78, 65 | 2021-12-14 | 2021-12-31 | 13d? | 8.5d |  |  | Project Manager | 104h | 13,416 | 13,416 |
| 67 | 9.12 | Project Management Period 12 | 10d? | 2022-01-13 | 2022-01-27 | 66, 79 | 2022-01-13 | 2022-01-27 | 10d? | 7d |  |  | Project Manager | 80h | 10,320 | 10,320 |

| ID | WBS | Task | Type | Duration | Start | Finish | Predecessors | Baseline start | Baseline finish | Baseline duration | Total slack | Free slack |
| --- | --- | --- | --- | --- | --- | --- | --- | --- | --- | --- | --- | --- |
| 68 | 10 | **Milestones** |  | 197.5d? | 2021-05-05 | 2022-02-07 |  | 2021-05-05 | 2022-02-07 | 197.5d? | 0d |  |
| 69 | 10.1 | Milestone 1 | milestone | 0d? | 2021-05-05 | 2021-05-05 | 56, 5 | 2021-05-05 | 2021-05-05 | 0d? | 12d | 0d |
| 70 | 10.2 | Milestone 2 | milestone | 0d? | 2021-05-25 | 2021-05-25 | 17, 50, 57 | 2021-05-25 | 2021-05-25 | 0d? | 12d | 0d |
| 71 | 10.3 | Milestone 3 | milestone | 0d? | 2021-07-02 | 2021-07-02 | 58, 52, 51, 19 | 2021-07-02 | 2021-07-02 | 0d? | 12d | 0d |
| 72 | 10.4 | Milestone 4 | milestone | 0d? | 2021-07-22 | 2021-07-22 | 23, 59 | 2021-07-22 | 2021-07-22 | 0d? | 12d | 0d |
| 73 | 10.5 | Milestone 5 | milestone | 0d? | 2021-08-20 | 2021-08-20 | 60, 26 | 2021-08-20 | 2021-08-20 | 0d? | 12d | 0d |
| 74 | 10.6 | Milestone 6 | milestone | 0d? | 2021-09-15 | 2021-09-15 | 27, 33, 8, 7, 61 | 2021-09-15 | 2021-09-15 | 0d? | 12d | 0d |
| 75 | 10.7 | Milestone 7 | milestone | 0d? | 2021-10-12 | 2021-10-12 | 62, 12, 34 | 2021-10-12 | 2021-10-12 | 0d? | 12d | 0d |
| 76 | 10.8 | Milestone 8 | milestone | 0d? | 2021-11-02 | 2021-11-02 | 28, 39, 13, 63, 53, 35 | 2021-11-02 | 2021-11-02 | 0d? | 12d | 0d |
| 77 | 10.9 | Milestone 9 | milestone | 0d? | 2021-11-12 | 2021-11-12 | 64, 36, 30 | 2021-11-12 | 2021-11-12 | 0d? | 12d | 0d |
| 78 | 10.10 | Milestone 10 | milestone | 0d? | 2021-12-14 | 2021-12-14 | 40, 37, 14, 65 | 2021-12-14 | 2021-12-14 | 0d? | 0d |  |
| 79 | 10.11 | Milestone 11 | milestone | 0d? | 2022-01-13 | 2022-01-13 | 66, 43 | 2022-01-13 | 2022-01-13 | 0d? | 0d |  |
| 80 | 10.12 | Milestone 12 | milestone | 0d? | 2022-02-07 | 2022-02-07 | 67, 54 | 2022-02-07 | 2022-02-07 | 0d? | 0d |  |
